# Simple Project Plan

Schedule from MS Project, 2023-10-16 to 2024-01-12.

## Calendars

- Standard: Mon-Fri 08:00-12:00, 13:00-17:00; Sat-Sun off.

## Resources

| Resource |
| --- |
| Sohaib |
| Hashim |
| Awais |
| Makarma |
| Nouman |
| Humayun |

## Schedule

| ID | WBS | Task | Type | Duration | Start | Finish | Constraint | Resources | Work |
| --- | --- | --- | --- | --- | --- | --- | --- | --- | --- |
| 1 | 1 | **Complaints** |  | 55d? | 2023-10-30 | 2024-01-12 |  |  | 1611h |
| 2 | 1.1 | **Development** |  | 50d? | 2023-10-30 | 2024-01-05 |  |  | 1091h |
| 3 | 1.1.1 | **APIs** |  | 15d | 2023-10-30 | 2023-11-17 |  |  | 224h |
| 4 | 1.1.1.1 | get_Report_Complaint_List | manual | 1.25d | 2023-10-30 | 2023-10-31 | start no earlier than 2023-10-30 | Makarma | 8h |
| 5 | 1.1.1.2 | getCustomLists | manual | 2d | 2023-10-31 | 2023-11-01 |  | Makarma | 8h |
| 6 | 1.1.1.3 | getComplaintsIntellisense | manual | 2d | 2023-10-30 | 2023-10-31 |  | Sohaib | 10h |
| 7 | 1.1.1.4 | GetHotListComplaint | manual | 2d | 2023-10-31 | 2023-11-01 |  | Sohaib | 8h |
| 8 | 1.1.1.5 | GetSetUserDefaultLists | manual | 1.25d | 2023-11-01 | 2023-11-02 |  | Makarma | 8h |
| 9 | 1.1.1.6 | GetComplaintCustomList | manual | 1.88d | 2023-11-02 | 2023-11-03 |  | Makarma | 8h |
| 10 | 1.1.1.7 | GetTemplateVersion | manual | 2d | 2023-11-01 | 2023-11-02 |  | Sohaib | 16h |
| 11 | 1.1.1.8 | GetPatientGender | manual | 1d | 2023-11-03 | 2023-11-03 |  | Makarma | 8h |
| 12 | 1.1.1.9 | GetQaALevel1 | manual | 3d | 2023-11-03 | 2023-11-07 |  | Sohaib | 20h |
| 13 | 1.1.1.10 | GetQaALevel2 | manual | 3d | 2023-11-07 | 2023-11-09 |  | Sohaib | 20h |
| 14 | 1.1.1.11 | GetQaALevel3 | manual | 3d | 2023-11-10 | 2023-11-14 |  | Sohaib | 20h |
| 15 | 1.1.1.12 | GetSymptomList | manual | 1d | 2023-11-03 | 2023-11-03 |  | Awais | 8h |
| 16 | 1.1.1.13 | GetHistorySymptoms | manual | 2d | 2023-11-06 | 2023-11-07 |  | Awais | 16h |
| 17 | 1.1.1.14 | GetSoapTextComplaint | manual | 1d | 2023-11-06 | 2023-11-06 |  | Makarma | 8h |
| 18 | 1.1.1.15 | InsertHistorySymptoms | manual | 1d | 2023-11-08 | 2023-11-08 |  | Awais | 8h |
| 19 | 1.1.1.16 | insertRelatedcustomFields1 | manual | 1d | 2023-11-15 | 2023-11-15 |  | Sohaib | 8h |
| 20 | 1.1.1.17 | insertRelatedcustomFields2 | manual | 1d | 2023-11-16 | 2023-11-16 |  | Sohaib | 8h |
| 21 | 1.1.1.18 | insertRelatedcustomFields3 | manual | 1d | 2023-11-17 | 2023-11-17 |  | Sohaib | 8h |
| 22 | 1.1.1.19 | Get Followup Complaints | manual | 1d | 2023-11-09 | 2023-11-09 |  | Awais | 10h |
| 23 | 1.1.1.20 | DeleteHistorySymptoms | manual | 2d | 2023-11-10 | 2023-11-13 |  | Awais | 8h |
| 24 | 1.1.1.21 | DeletePresentIllness_Header | manual | 2d | 2023-11-13 | 2023-11-14 |  | Awais | 8h |

Notes:
- 1: This is a summary task. Use summary tasks to help organize your project into sections.

| ID | WBS | Task | Type | Duration | Start | Finish | Constraint | Resources | Work |
| --- | --- | --- | --- | --- | --- | --- | --- | --- | --- |
| 25 | 1.1.2 | **Front End Implementation** |  | 43d? | 2023-10-31 | 2023-12-28 |  |  | 611h |
| 26 | 1.1.2.1 | Layout for Complaints | manual | 7d | 2023-11-07 | 2023-11-15 |  | Awais; Makarma | 60h |
| 27 | 1.1.2.2 | Left Menu (Clinical Overview) | manual | 7d | 2023-11-16 | 2023-11-24 |  | Sohaib; Awais; Makarma | 130h |
| 28 | 1.1.2.3 | Top navigation Layout Changes of Complaints | manual | 4d | 2023-11-24 | 2023-11-29 |  | Sohaib; Awais; Makarma | 75h |
| 29 | 1.1.2.4 | Right progress tabs | manual | 3d | 2023-11-29 | 2023-12-01 |  | Sohaib; Awais; Makarma | 70h |
| 30 | 1.1.2.5 | Main Complaints body | manual | 8d | 2023-12-04 | 2023-12-13 |  | Sohaib; Awais; Makarma | 200h |
| 31 | 1.1.2.6 | Integration | manual | 2d | 2023-12-14 | 2023-12-15 |  | Sohaib; Awais; Makarma | 20h |
| 32 | 1.1.2.7 | mixpanel logging | manual | 1d | 2023-12-18 | 2023-12-18 |  | Makarma | 6h |
| 33 | 1.1.2.8 | Follow up Complaint View | manual | 2d | 2023-12-18 | 2023-12-19 |  | Sohaib; Makarma | 50h |
| 34 | 1.1.3 | **RnD** |  | 3d | 2023-12-19 | 2023-12-21 |  |  | 50h |
| 35 | 1.1.3.1 | RnD to understand of the Complaint's remaining/missed bussiness rules | manual | 3d | 2023-12-19 | 2023-12-21 |  | Sohaib; Makarma | 50h |
| 36 | 1.1.4 | **Audit Trail** |  | 12d | 2023-12-18 | 2024-01-02 |  |  | 96h |
| 37 | 1.1.4.1 | Implementation of Insert/Update/Delete/View audit trail | manual | 10d | 2023-12-18 | 2023-12-29 |  | Awais | 80h |
| 38 | 1.1.4.2 | Evaluation | manual | 2d | 2024-01-01 | 2024-01-02 |  | Awais | 16h |
| 39 | 1.1.5 | **Bug Fixes** |  | 20d | 2023-12-01 | 2023-12-28 |  |  | 60h |
| 40 | 1.1.5.1 | Setting Side Regression Bug Impacting Data on provider notes | manual | 1d | 2023-12-22 | 2023-12-22 | start no earlier than 2023-12-22 | Sohaib | 10h |
| 41 | 1.1.5.2 | Bug Fixes and verification | manual | 2d | 2023-12-22 | 2023-12-25 | start no earlier than 2023-12-22 | Sohaib; Awais; Makarma | 50h |
| 42 | 1.1.6 | Code Reviews | manual | 5d | 2023-12-25 | 2023-12-29 | start no earlier than 2023-12-25 | Hashim | 50h |
| 43 | 1.2 | **Testing** |  | 65d? | 2023-10-16 | 2024-01-12 |  |  | 520h |
| 44 | 1.2.1 | **APIs** |  | 12d? | 2023-10-30 | 2023-11-14 |  |  | 90h |
| 45 | 1.2.1.1 | Detail Testing of Api's on Postman | manual | 12d | 2023-10-30 | 2023-11-14 | start no earlier than 2023-10-30 | Nouman; Humayun | 70h |
| 46 | 1.2.1.2 | API Endpoints validation testing documentation | manual | 12d | 2023-10-30 | 2023-11-14 |  | Nouman; Humayun | 20h |
| 47 | 1.2.2 | **Front End Testing** |  | 35d? | 2023-11-06 | 2023-12-22 |  |  | 220h |
| 48 | 1.2.2.1 | Clinical OverView (Left Nav Progress Notes) Data migration Testing | manual | 30d | 2023-11-13 | 2023-12-22 | start no earlier than 2023-11-13 | Nouman; Humayun | 30h |
| 49 | 1.2.2.2 | Complaints Soap Text and note templates Testing | manual | 30d | 2023-11-13 | 2023-12-22 | start no earlier than 2023-11-13 | Nouman; Humayun | 70h |
| 50 | 1.2.2.3 | Existing Notes Verification | manual | 30d | 2023-11-13 | 2023-12-22 | start no earlier than 2023-11-13 | Nouman; Humayun | 40h |
| 51 | 1.2.2.4 | Business Rules Testing on the implemented Architecture | manual | 30d | 2023-11-13 | 2023-12-22 | start no earlier than 2023-11-13 | Nouman; Humayun | 80h |

| ID | WBS | Task | Type | Duration | Start | Finish | Constraint | Resources | Work |
| --- | --- | --- | --- | --- | --- | --- | --- | --- | --- |
| 52 | 1.2.3 | **Business Rule Documentation** |  | 5d | 2023-10-30 | 2023-11-03 |  |  | 80h |
| 53 | 1.2.3.1 | Business Rule Identification + Documentation | manual | 5d | 2023-10-30 | 2023-11-03 | start no earlier than 2023-10-30 | Nouman; Humayun | 40h |
| 54 | 1.2.3.2 | Identification of the existing workflows of complaints +Domain understanding | manual | 5d | 2023-10-30 | 2023-11-03 |  | Nouman; Humayun | 40h |
| 55 | 1.2.4 | **Audit Trail** |  | 5d | 2023-12-25 | 2023-12-29 |  |  | 30h |
| 56 | 1.2.4.1 | Insert/Update/Delete/View Testing | manual | 5d | 2023-12-25 | 2023-12-29 | start no earlier than 2023-12-25 | Nouman; Humayun | 30h |
| 57 | 1.2.5 | **Bugs** |  | 55d? | 2023-10-30 | 2024-01-12 |  |  | 60h |
| 58 | 1.2.5.1 | Bugs Logging | manual | 55d | 2023-10-30 | 2024-01-12 | start no earlier than 2023-10-30 | Nouman; Humayun | 20h |
| 59 | 1.2.5.2 | Reverification of the bugs been resolved | manual | 55d | 2023-10-30 | 2024-01-12 |  | Nouman; Humayun | 40h |
| 60 | 1.2.6 | Integration Testing | manual | 15d | 2023-12-25 | 2024-01-12 | start no earlier than 2023-12-25 | Nouman; Humayun | 40h |
